# Cronograma_2003

Schedule from MS Project, 2008-10-03 to 2008-12-19, costs in R$.
versão 1.0
Target
Cronograma de atividades do projeto BPAD, elaborado pela equipe Target da disciplina Projeto Supervisionado de Analise do curso de Analise e Desenvolvimento de Sistemas da Unibratec-PB.

## Calendars

- Standard: Mon-Fri 08:00-12:00, 13:00-17:00; Sat-Sun off. Exceptions (off unless hours are given): 2008-10-04 08:00-12:00, 13:00-17:00, 2008-11-22 08:00-12:00, 13:00-17:00, 2008-12-06 08:00-12:00, 13:00-17:00, 2008-12-13 08:00-12:00, 13:00-17:00.

## Resources

| Resource | Rate |
| --- | --- |
| George Melo | 30 |
| Antonio Carlos | 30 |
| Leszek Trajano | 30 |
| Humberto Marques | 30 |

## Schedule

| ID | WBS | Task | Type | Duration | Start | Finish | Predecessors | Total slack | Free slack | Constraint | Resources | Work | Cost |
| --- | --- | --- | --- | --- | --- | --- | --- | --- | --- | --- | --- | --- | --- |
| 1 | 1 | **BPAD** |  | 59d | 2008-10-03 08:00 | 2008-12-19 08:00 |  | 0d |  |  |  | 679h | 20,370 |
| 2 | 1.1 | **Realese 1** |  | 11.12d | 2008-10-03 08:00 | 2008-10-17 09:00 |  | 47.88d |  |  |  | 84h | 2,520 |
| 3 | 1.1.1 | Brainstorm Documentação |  | 1h | 2008-10-03 08:00 | 2008-10-03 09:00 |  | 58.88d |  | start no earlier than 2008-10-03 08:00 | Antonio Carlos | 1h | 30 |
| 4 | 1.1.2 | Publicar Cronograma no SVN |  | 1h | 2008-10-03 08:00 | 2008-10-03 09:00 |  | 58.88d |  | start no earlier than 2008-10-03 08:00 | George Melo | 1h | 30 |
| 5 | 1.1.3 | **Criação do Banco de Dados** |  | 0.38d | 2008-10-03 08:00 | 2008-10-03 11:00 |  | 51.75d |  |  |  | 3h | 90 |
| 6 | 1.1.3.1 | Script SQL |  | 2h | 2008-10-03 08:00 | 2008-10-03 10:00 |  | 51.75d | 0d | start no earlier than 2008-10-03 08:00 | Humberto Marques | 2h | 60 |
| 7 | 1.1.3.2 | Popular Tabelas Auxiliares ao Banco |  | 1h | 2008-10-03 10:00 | 2008-10-03 11:00 | 6 | 51.75d | 1d |  | Humberto Marques | 1h | 30 |
| 8 | 1.1.4 | Modelo de Navegação |  | 2h | 2008-10-03 08:00 | 2008-10-03 10:00 |  | 58.75d |  | start no earlier than 2008-10-03 08:00 | Antonio Carlos | 2h | 60 |
| 9 | 1.1.5 | Criação de Protótipo de Interface |  | 16h | 2008-10-06 08:00 | 2008-10-07 17:00 |  | 51.75d | 0d | finish no earlier than 2008-10-07 17:00 | George Melo | 16h | 480 |
| 10 | 1.1.6 | **Implementação dos Casos de Uso Mobile** |  | 1d | 2008-10-08 08:00 | 2008-10-08 17:00 |  | 51.75d |  |  |  | 8h | 240 |
| 11 | 1.1.6.1 | Efetuar Login |  | 8h | 2008-10-08 08:00 | 2008-10-08 17:00 | 7, 9 | 51.75d | 1d | start no earlier than 2008-10-08 08:00 | George Melo | 8h | 240 |
| 12 | 1.1.7 | **Implementação dos Casos de Uso Web** |  | 4.62d | 2008-10-04 11:00 | 2008-10-09 17:00 |  | 50.75d |  |  |  | 37h | 1,110 |
| 13 | 1.1.7.1 | Efetuar Login |  | 13h | 2008-10-04 11:00 | 2008-10-06 17:00 | 7 | 50.75d | 0d | finish no earlier than 2008-10-06 17:00 | Leszek Trajano | 13h | 390 |
| 14 | 1.1.7.2 | Cadastrar Unidade de Saude |  | 8h | 2008-10-07 08:00 | 2008-10-07 17:00 | 13 | 50.75d | 0d | finish no earlier than 2008-10-07 17:00 | Leszek Trajano | 8h | 240 |
| 15 | 1.1.7.3 | Atualizar Unidade de Saude |  | 8h | 2008-10-08 08:00 | 2008-10-08 17:00 | 14 | 50.75d | 0d | finish no earlier than 2008-10-08 17:00 | Humberto Marques | 8h | 240 |
| 16 | 1.1.7.4 | Consultar Unidade de Saude |  | 8h | 2008-10-09 08:00 | 2008-10-09 17:00 | 15 | 50.75d | 0d | finish no earlier than 2008-10-09 17:00 | Leszek Trajano | 8h | 240 |
| 17 | 1.1.8 | Homologação da release |  | 8h | 2008-10-10 08:00 | 2008-10-10 17:00 | 7, 11, 16 | 50.75d | 2d | start no earlier than 2008-10-10 08:00 | Humberto Marques | 8h | 240 |
| 18 | 1.1.9 | Criação da apresentação da realese 1 |  | 8h | 2008-10-15 08:00 | 2008-10-15 17:00 | 17 | 48.75d | 0d | finish no earlier than 2008-10-15 17:00 | George Melo | 8h | 240 |
| 19 | 1.1.10 | Reunião de acompanhamento |  | 2h | 2008-10-16 08:00 | 2008-10-16 10:00 | 18 | 48.75d |  |  |  |  |  |
| 20 | 1.1.11 | Entrega da realese 1 (Apresentção) |  | 1h | 2008-10-17 08:00 | 2008-10-17 09:00 |  | 47.88d |  | start no earlier than 2008-10-17 08:00 |  |  |  |
| 21 | 1.1.12 | Final da realese 1 | milestone | 0d | 2008-10-17 08:00 | 2008-10-17 08:00 |  | 39.62d | 1d | start no earlier than 2008-10-17 08:00 |  |  |  |
| 23 | 1.2 | **Realese 2** |  | 14.25d | 2008-10-20 08:00 | 2008-11-07 10:00 | 21 | 32.75d |  |  |  | 312h | 9,360 |
| 24 | 1.2.1 | **Implementação dos Casos de Uso Mobile** |  | 4.25d | 2008-10-20 08:00 | 2008-10-24 10:00 |  | 42.75d |  |  |  | 128h | 3,840 |
| 25 | 1.2.1.1 | Cadastrar Paciente |  | 32h | 2008-10-20 08:00 | 2008-10-23 17:00 |  | 42.75d | 0d | finish no earlier than 2008-10-23 17:00 | George Melo | 32h | 960 |
| 26 | 1.2.1.2 | Consultar Paciente |  | 32h | 2008-10-20 08:00 | 2008-10-23 17:00 |  | 42.75d | 0d | finish no earlier than 2008-10-23 17:00 | Antonio Carlos | 32h | 960 |
| 27 | 1.2.1.3 | Atualizar Paciente |  | 32h | 2008-10-20 08:00 | 2008-10-23 17:00 |  | 43d |  | finish no earlier than 2008-10-23 17:00 | Leszek Trajano | 32h | 960 |
| 28 | 1.2.1.4 | Preencher Ficha Diária |  | 32h | 2008-10-20 08:00 | 2008-10-23 17:00 |  | 42.75d | 0d | finish no earlier than 2008-10-23 17:00 | Humberto Marques | 32h | 960 |
| 29 | 1.2.1.5 | Reunião de acompanhamento |  | 2h | 2008-10-24 08:00 | 2008-10-24 10:00 | 25, 26, 28 | 42.75d |  |  |  |  |  |

| ID | WBS | Task | Type | Duration | Start | Finish | Predecessors | Total slack | Free slack | Constraint | Resources | Work | Cost |
| --- | --- | --- | --- | --- | --- | --- | --- | --- | --- | --- | --- | --- | --- |
| 30 | 1.2.2 | **Implementação dos Casos de Uso Web** |  | 9.25d | 2008-10-27 08:00 | 2008-11-07 10:00 |  | 32.75d |  |  |  | 184h | 5,520 |
| 31 | 1.2.2.1 | Cadastrar Paciente |  | 16h | 2008-10-27 08:00 | 2008-10-28 17:00 |  | 40d |  | finish no earlier than 2008-10-28 17:00 | Humberto Marques | 16h | 480 |
| 32 | 1.2.2.2 | Atualizar Paciente |  | 24h | 2008-10-27 08:00 | 2008-10-29 17:00 |  | 39d |  | finish no earlier than 2008-10-29 17:00 | Humberto Marques | 24h | 720 |
| 33 | 1.2.2.3 | Consultar Paciente |  | 32h | 2008-10-27 08:00 | 2008-10-30 17:00 |  | 38d |  | finish no earlier than 2008-10-30 17:00 | Humberto Marques | 32h | 960 |
| 34 | 1.2.2.4 | Cadastrar Profissional de Saude |  | 32h | 2008-10-27 08:00 | 2008-10-30 17:00 |  | 38d |  | finish no earlier than 2008-10-30 17:00 | George Melo | 32h | 960 |
| 35 | 1.2.2.5 | Atualizar Profissional de Saude |  | 32h | 2008-10-27 08:00 | 2008-10-30 17:00 |  | 38d |  | finish no earlier than 2008-10-30 17:00 | Antonio Carlos | 32h | 960 |
| 36 | 1.2.2.6 | Consultar Profissional de Saude |  | 32h | 2008-10-27 08:00 | 2008-10-30 17:00 |  | 35.75d | 0d | finish no earlier than 2008-10-30 17:00 | Leszek Trajano | 32h | 960 |
| 37 | 1.2.2.7 | Homologação da release |  | 8h | 2008-10-31 08:00 | 2008-10-31 17:00 | 36 | 35.75d | 0d |  | George Melo | 8h | 240 |
| 38 | 1.2.2.8 | Criação da apresentação da release 2 |  | 8h | 2008-11-03 08:00 | 2008-11-03 17:00 | 37 | 35.75d | 2d |  | Antonio Carlos | 8h | 240 |
| 39 | 1.2.2.9 | Reunião de acompanhamento |  | 2h | 2008-11-06 08:00 | 2008-11-06 10:00 | 38 | 33.75d |  | start no earlier than 2008-11-06 08:00 |  |  |  |
| 40 | 1.2.2.10 | Entrega da Realese 2 (Apresentação) |  | 2h | 2008-11-07 08:00 | 2008-11-07 10:00 |  | 32.75d |  | start no earlier than 2008-11-07 08:00 |  |  |  |
| 41 | 1.2.2.11 | Final Realese 2 | milestone | 0d | 2008-11-07 08:00 | 2008-11-07 08:00 |  | 24.62d | 1d | start no earlier than 2008-11-07 08:00 |  |  |  |
| 43 | 1.3 | **Realese 3** |  | 25.25d | 2008-11-10 08:00 | 2008-12-11 10:00 | 41 | 6.75d |  |  |  | 251h | 7,530 |
| 44 | 1.3.1 | **Implementação dos Casos de Uso Mobile** |  | 10.25d | 2008-11-10 08:00 | 2008-11-22 10:00 |  | 21.75d |  |  |  | 75h | 2,250 |
| 45 | 1.3.1.1 | Atualizar Ficha Diária |  | 8h | 2008-11-10 08:00 | 2008-11-10 17:00 |  | 31d |  | start no earlier than 2008-11-10 08:00 | Leszek Trajano | 8h | 240 |
| 46 | 1.3.1.2 | Consultar Ficha Diária |  | 8h | 2008-11-10 08:00 | 2008-11-10 17:00 |  | 23.62d | 1d | start no earlier than 2008-11-10 08:00 | George Melo | 8h | 240 |
| 47 | 1.3.1.3 | Sincronizar Dados com Servidor |  | 51h | 2008-11-13 08:00 | 2008-11-21 11:00 | 48 | 22.62d |  | finish no earlier than 2008-11-20 17:00 | Antonio Carlos | 51h | 1,530 |
| 48 | 1.3.1.4 | Popular Banco de Dados no Servidor |  | 8h | 2008-11-12 08:00 | 2008-11-12 17:00 | 46 | 22.62d | 0d | finish no earlier than 2008-11-12 17:00 | Humberto Marques | 8h | 240 |
| 49 | 1.3.1.5 | Reunião de Acompanhamento |  | 2h | 2008-11-22 08:00 | 2008-11-22 10:00 |  | 13.75d | 0.75d | start no earlier than 2008-11-22 08:00 |  |  |  |
| 50 | 1.3.2 | **Implementação dos Casos de Uso Web** |  | 8d | 2008-11-24 08:00 | 2008-12-03 17:00 |  | 13d |  |  |  | 160h | 4,800 |
| 51 | 1.3.2.1 | Consolidar BPA |  | 64h | 2008-11-24 08:00 | 2008-12-03 17:00 | 49 | 13d |  | start no earlier than 2008-11-24 08:00 | Humberto Marques | 64h | 1,920 |
| 52 | 1.3.2.2 | Gerar Relatório |  | 32h | 2008-11-24 08:00 | 2008-11-27 17:00 | 49 | 17d |  | finish no earlier than 2008-11-27 17:00 | Leszek Trajano | 32h | 960 |
| 53 | 1.3.2.3 | Sincronizar Dispositivel Móvel |  | 64h | 2008-11-24 08:00 | 2008-12-03 17:00 | 49 | 13d |  | start no earlier than 2008-11-24 08:00 | Antonio Carlos | 64h | 1,920 |
| 54 | 1.3.3 | Reunião de acompanhamento |  | 2h | 2008-12-04 08:00 | 2008-12-04 10:00 |  | 12.75d |  | start no earlier than 2008-12-04 08:00 |  |  |  |
| 55 | 1.3.4 | Homologação da release |  | 8h | 2008-12-05 08:00 | 2008-12-05 17:00 |  | 9.5d | 0d | start no earlier than 2008-12-05 08:00 | George Melo | 8h | 240 |
| 56 | 1.3.5 | Criação da apresentação da release 3 |  | 8h | 2008-12-06 08:00 | 2008-12-06 17:00 | 55 | 9.5d | 0d | start no earlier than 2008-12-06 08:00 | George Melo | 8h | 240 |
| 57 | 1.3.6 | Reunião de acompanhamento |  | 2h | 2008-12-08 08:00 | 2008-12-08 10:00 | 56 | 9.5d | 2.75d |  |  |  |  |
| 58 | 1.3.7 | Entrega da Realese 3 (Apresentação) |  | 2h | 2008-12-11 08:00 | 2008-12-11 10:00 | 57 | 6.75d |  | start no earlier than 2008-12-11 08:00 |  |  |  |
| 59 | 1.3.8 | Final Realese 3 | milestone | 0d | 2008-12-11 08:00 | 2008-12-11 08:00 |  | 4.5d | 1d | start no earlier than 2008-12-11 08:00 |  |  |  |

| ID | WBS | Task | Type | Duration | Start | Finish | Predecessors | Total slack | Free slack | Constraint | Resources | Work | Cost |
| --- | --- | --- | --- | --- | --- | --- | --- | --- | --- | --- | --- | --- | --- |
| 61 | 1.4 | **Release 4** |  | 6d | 2008-12-12 08:00 | 2008-12-19 08:00 | 59 | 0d |  |  |  | 32h | 960 |
| 62 | 1.4.1 | Criação da apresentação final (Documentação) |  | 8h | 2008-12-12 08:00 | 2008-12-12 17:00 |  | 3.5d | 0d | start no earlier than 2008-12-12 08:00 | George Melo | 8h | 240 |
| 63 | 1.4.2 | Criação da apresentação final (Diagramação) |  | 8h | 2008-12-12 08:00 | 2008-12-12 17:00 |  | 3.5d | 0d | start no earlier than 2008-12-12 08:00 | Antonio Carlos | 8h | 240 |
| 64 | 1.4.3 | Criação da apresentação final (Banco de Dados) |  | 8h | 2008-12-12 08:00 | 2008-12-12 17:00 |  | 3.5d | 0d | start no earlier than 2008-12-12 08:00 | Humberto Marques | 8h | 240 |
| 65 | 1.4.4 | Criação da apresentação final (Interfaces) |  | 8h | 2008-12-12 08:00 | 2008-12-12 17:00 |  | 3.5d | 0d | start no earlier than 2008-12-12 08:00 | Leszek Trajano | 8h | 240 |
| 66 | 1.4.5 | Reunião de acompanhamento |  | 2h | 2008-12-13 08:00 | 2008-12-13 10:00 | 65, 62, 63, 64 | 3.5d | 0d | start no earlier than 2008-12-13 08:00 |  |  |  |
| 67 | 1.4.6 | Criação da apresentação final (Fusão) |  | 6h | 2008-12-13 10:00 | 2008-12-13 17:00 | 66 | 3.5d | 3d |  |  |  |  |
| 68 | 1.4.7 | Entrega da Realese 4 (Ensaio) |  | 4h | 2008-12-18 08:00 | 2008-12-18 12:00 | 67 | 0.5d |  | start no earlier than 2008-12-18 08:00 |  |  |  |
| 69 | 1.4.8 | Final Realese 3 | milestone | 0d | 2008-12-19 08:00 | 2008-12-19 08:00 |  | 0d |  | start no earlier than 2008-12-19 08:00 |  |  |  |
| 71 | 2 | Dead Line | milestone | 0d | 2008-12-19 08:00 | 2008-12-19 08:00 |  | 0d |  | start no earlier than 2008-12-19 08:00 |  |  |  |
