# Cronograma

Schedule from MS Project, 2008-10-03 to 2008-12-05, costs in R$, A marks actual dates.
versão 1.0
Target
Cronograma de atividades do projeto BPAD, elaborado pela equipe Target da disciplina Projeto Supervisionado de Analise do curso de Analise e Desenvolvimento de Sistemas da Unibratec-PB.

## Calendars

- Standard: Mon-Fri 08:00-12:00, 13:00-17:00; Sat-Sun off. Exceptions (off unless hours are given): 2008-10-04 08:00-12:00, 13:00-17:00, 2008-11-22 08:00-12:00, 13:00-17:00.

## Resources

| Resource | Rate |
| --- | --- |
| George Melo | 30 |
| Antonio Carlos | 30 |
| Leszek Trajano | 30 |
| Humberto Marques | 30 |

## Schedule

| ID | WBS | Task | Type | Duration | Start | Finish | Predecessors | Complete | Remaining | Total slack | Free slack | Constraint | Resources | Work | Actual work | Cost | Actual cost |
| --- | --- | --- | --- | --- | --- | --- | --- | --- | --- | --- | --- | --- | --- | --- | --- | --- | --- |
| 1 | 1 | **BPAD** |  | 47d | 2008-10-03 08:00 A | 2008-12-05 08:00 |  | 40% | 28.08d | 0d |  |  |  | 656h | 269h | 19,680 | 8,070 |
| 2 | 1.1 | **Realese 1** |  | 16d | 2008-10-03 08:00 A | 2008-10-23 17:00 |  | 97% | 0.53d | 31d |  |  |  | 105h | 101h | 3,150 | 3,030 |
| 3 | 1.1.1 | Brainstorm Documentação |  | 8h | 2008-10-03 08:00 A | 2008-10-03 17:00 A |  | 100% |  |  |  | start no earlier than 2008-10-03 08:00 | Antonio Carlos | 8h | 8h | 240 | 240 |
| 4 | 1.1.2 | Publicar Cronograma no SVN |  | 8h | 2008-10-03 08:00 A | 2008-10-03 17:00 A |  | 100% |  |  |  | start no earlier than 2008-10-03 08:00 | George Melo | 8h | 8h | 240 | 240 |
| 5 | 1.1.3 | **Criação do Banco de Dados** |  | 1d | 2008-10-03 08:00 A | 2008-10-03 17:00 A |  | 100% |  |  |  |  |  | 9h | 9h | 270 | 270 |
| 6 | 1.1.3.1 | Script SQL |  | 8h | 2008-10-03 08:00 A | 2008-10-03 17:00 A |  | 100% |  |  |  | start no earlier than 2008-10-03 08:00 | Humberto Marques | 8h | 8h | 240 | 240 |
| 7 | 1.1.3.2 | Popular Tabelas Auxiliares ao Banco |  | 1h | 2008-10-03 10:00 A | 2008-10-03 11:00 A | 6 | 100% |  |  |  |  | Humberto Marques | 1h | 1h | 30 | 30 |
| 8 | 1.1.4 | Modelo de Navegação |  | 8h | 2008-10-03 08:00 A | 2008-10-03 17:00 A |  | 100% |  |  |  | start no earlier than 2008-10-03 08:00 | Antonio Carlos | 8h | 8h | 240 | 240 |
| 9 | 1.1.5 | Criação de Protótipo de Interface |  | 16h | 2008-10-06 08:00 A | 2008-10-07 17:00 A |  | 100% |  |  |  | finish no earlier than 2008-10-07 17:00 | George Melo | 16h | 16h | 480 | 480 |
| 10 | 1.1.6 | **Implementação dos Casos de Uso Mobile** |  | 1d | 2008-10-08 08:00 A | 2008-10-08 17:00 A |  | 100% |  |  |  |  |  | 8h | 8h | 240 | 240 |
| 11 | 1.1.6.1 | Efetuar Login Mobile |  | 8h | 2008-10-08 08:00 A | 2008-10-08 17:00 A | 7, 9 | 100% |  |  |  | start no earlier than 2008-10-08 08:00 | George Melo | 8h | 8h | 240 | 240 |
| 12 | 1.1.7 | **Implementação dos Casos de Uso Web** |  | 5d | 2008-10-04 08:00 A | 2008-10-09 17:00 |  | 88% | 0.62d | 41d |  |  |  | 32h | 28h | 960 | 840 |
| 13 | 1.1.7.1 | Efetuar Login |  | 8h | 2008-10-04 08:00 A | 2008-10-04 17:00 | 7 | 50% | 4h | 45d |  | start no earlier than 2008-10-04 08:00 | Leszek Trajano | 8h | 4h | 240 | 120 |
| 14 | 1.1.7.2 | Cadastrar Unidade de Saude Web |  | 8h | 2008-10-07 08:00 A | 2008-10-07 17:00 A | 13 | 100% |  |  |  | finish no earlier than 2008-10-07 17:00 | Leszek Trajano | 8h | 8h | 240 | 240 |
| 15 | 1.1.7.3 | Atualizar Unidade de Saude Web |  | 8h | 2008-10-08 08:00 A | 2008-10-08 17:00 A | 14 | 100% |  |  |  | finish no earlier than 2008-10-08 17:00 | Humberto Marques | 8h | 8h | 240 | 240 |
| 16 | 1.1.7.4 | Consultar Unidade de Saude Web |  | 8h | 2008-10-09 08:00 A | 2008-10-09 17:00 A | 15 | 100% |  |  |  | finish no earlier than 2008-10-09 17:00 | Leszek Trajano | 8h | 8h | 240 | 240 |
| 17 | 1.1.8 | Homologação da release 1 |  | 8h | 2008-10-16 08:00 A | 2008-10-16 17:00 A | 7, 11, 16 | 100% |  |  |  | start no earlier than 2008-10-16 08:00 | Humberto Marques | 8h | 8h | 240 | 240 |
| 18 | 1.1.9 | Criação da apresentação da realese 1 |  | 8h | 2008-10-21 08:00 A | 2008-10-21 17:00 A | 17 | 100% |  |  |  | start no earlier than 2008-10-21 08:00 | George Melo | 8h | 8h | 240 | 240 |
| 19 | 1.1.10 | Reunião de acompanhamento 1 |  | 8h | 2008-10-22 08:00 A | 2008-10-22 17:00 A | 18 | 100% |  |  |  | start no earlier than 2008-10-22 08:00 |  |  |  |  |  |
| 20 | 1.1.11 | Entrega da realese 1 (Apresentção) |  | 8h | 2008-10-23 08:00 A | 2008-10-23 17:00 A | 18, 19 | 100% |  |  |  | start no earlier than 2008-10-23 08:00 |  |  |  |  |  |
| 21 | 1.1.12 | Final da realese 1 | milestone | 0d | 2008-10-23 17:00 A | 2008-10-23 17:00 | 20 | 95% | 0d | 0d |  | start no earlier than 2008-10-17 08:00 |  |  |  |  |  |
| 22 | 1.2 | **Realese 2** |  | 14d | 2008-10-24 08:00 A | 2008-11-13 08:00 | 21 | 47% | 7.47d | 17d |  |  |  | 344h | 168h | 10,320 | 5,040 |
| 23 | 1.2.1 | **Implementação dos Casos de Uso Mobile** |  | 5d | 2008-10-24 08:00 | 2008-10-30 17:00 |  |  |  | 26d |  |  |  | 128h |  | 3,840 |  |
| 24 | 1.2.1.1 | Cadastrar Paciente Mobile |  | 32h | 2008-10-24 08:00 | 2008-10-29 17:00 |  |  |  | 26d | 0d | finish no earlier than 2008-10-23 17:00 | George Melo | 32h |  | 960 |  |
| 25 | 1.2.1.2 | Consultar Paciente Mobile |  | 32h | 2008-10-24 08:00 | 2008-10-29 17:00 | 24SS |  |  | 26d | 0d | finish no earlier than 2008-10-23 17:00 | Antonio Carlos | 32h |  | 960 |  |
| 26 | 1.2.1.3 | Atualizar Paciente Mobile |  | 32h | 2008-10-24 08:00 | 2008-10-29 17:00 | 25SS |  |  | 27d | 0d | finish no earlier than 2008-10-23 17:00 | Leszek Trajano | 32h |  | 960 |  |
| 27 | 1.2.1.4 | Preencher Ficha Diária Mobile |  | 32h | 2008-10-24 08:00 | 2008-10-29 17:00 | 26SS |  |  | 26d | 0d | finish no earlier than 2008-10-23 17:00 | Humberto Marques | 32h |  | 960 |  |
| 28 | 1.2.1.5 | Reunião de acompanhamento release 2 |  | 8h | 2008-10-30 08:00 | 2008-10-30 17:00 | 24, 25, 27 |  |  | 26d |  | start no earlier than 2008-10-30 08:00 |  |  |  |  |  |

| ID | WBS | Task | Type | Duration | Start | Finish | Predecessors | Complete | Remaining | Total slack | Free slack | Constraint | Resources | Work | Actual work | Cost | Actual cost |
| --- | --- | --- | --- | --- | --- | --- | --- | --- | --- | --- | --- | --- | --- | --- | --- | --- | --- |
| 29 | 1.2.2 | **Implementação dos Casos de Uso Web** |  | 7d | 2008-10-24 08:00 A | 2008-11-03 17:00 |  | 75% | 1.75d | 24d |  |  |  | 216h | 168h | 6,480 | 5,040 |
| 30 | 1.2.2.1 | Cadastrar Paciente Web |  | 16h | 2008-10-24 08:00 A | 2008-10-27 17:00 A |  | 100% |  |  |  |  | Humberto Marques | 16h | 16h | 480 | 480 |
| 31 | 1.2.2.2 | Atualizar Paciente Web |  | 24h | 2008-10-24 08:00 A | 2008-10-28 17:00 A |  | 100% |  |  |  |  | Humberto Marques | 24h | 24h | 720 | 720 |
| 32 | 1.2.2.3 | Consultar Paciente Web |  | 32h | 2008-10-24 08:00 A | 2008-10-29 17:00 A |  | 100% |  |  |  |  | Humberto Marques | 32h | 32h | 960 | 960 |
| 33 | 1.2.2.4 | Preencher Ficha Diária Web |  | 32h | 2008-10-24 08:00 | 2008-10-29 17:00 |  |  |  | 27d |  | finish no earlier than 2008-10-23 17:00 | Humberto Marques | 32h |  | 960 |  |
| 34 | 1.2.2.5 | Cadastrar Profissional de Saude Web |  | 32h | 2008-10-24 08:00 A | 2008-10-29 17:00 A |  | 100% |  |  |  |  | George Melo | 32h | 32h | 960 | 960 |
| 35 | 1.2.2.6 | Atualizar Profissional de Saude Web |  | 32h | 2008-10-24 08:00 A | 2008-10-29 17:00 A |  | 100% |  |  |  |  | Antonio Carlos | 32h | 32h | 960 | 960 |
| 36 | 1.2.2.7 | Consultar Profissional de Saude Web |  | 32h | 2008-10-24 08:00 A | 2008-10-29 17:00 A |  | 100% |  |  |  |  | Leszek Trajano | 32h | 32h | 960 | 960 |
| 37 | 1.2.2.8 | Homologação da release 2 |  | 8h | 2008-10-30 08:00 | 2008-10-30 17:00 | 36, 30, 31, 32, 34, 35 |  |  | 2d | 0d |  | George Melo | 8h |  | 240 |  |
| 38 | 1.2.2.9 | Criação da apresentação da release 2 |  | 8h | 2008-10-31 08:00 | 2008-10-31 17:00 | 37 |  |  | 2d | 0d |  | Antonio Carlos | 8h |  | 240 |  |
| 39 | 1.2.2.10 | Reunião de acompanhamento release 2 |  | 2h | 2008-11-03 08:00 | 2008-11-03 10:00 | 38 |  |  | 2d | 0d |  |  |  |  |  |  |
| 40 | 1.2.2.11 | Entrega da Realese 2 (Apresentação) |  | 6h | 2008-11-03 10:00 | 2008-11-03 17:00 | 39 |  |  | 9.62d | 2d | start no earlier than 2008-11-03 08:00 |  |  |  |  |  |
| 41 | 1.2.3 | Final Realese 2 | milestone | 0d | 2008-11-13 08:00 A | 2008-11-13 08:00 | 40 | 60% | 0d | 0d |  | must start on 2008-11-13 08:00 |  |  |  |  |  |
| 42 | 1.3 | **Realese 3** |  | 13d | 2008-11-04 08:00 | 2008-11-21 08:00 | 40 |  |  | 8.5d |  |  |  | 175h |  | 5,250 |  |
| 43 | 1.3.1 | **Implementação dos Casos de Uso Mobile** |  | 6.62d | 2008-11-04 08:00 | 2008-11-12 14:00 |  |  |  | 9.62d | 4.25d |  |  | 75h |  | 2,250 |  |
| 44 | 1.3.1.1 | Atualizar Ficha Diária |  | 8h | 2008-11-04 08:00 | 2008-11-04 17:00 |  |  |  | 9.62d | 0d |  | Leszek Trajano | 8h |  | 240 |  |
| 45 | 1.3.1.2 | Consultar Ficha Diária |  | 8h | 2008-11-04 08:00 | 2008-11-04 17:00 | 44SS |  |  | 9.62d | 0d |  | George Melo | 8h |  | 240 |  |
| 46 | 1.3.1.3 | Sincronizar Dados com Servidor |  | 51h | 2008-11-04 08:00 | 2008-11-12 11:00 | 45SS |  |  | 9.62d | 0d |  | Antonio Carlos | 51h |  | 1,530 |  |
| 47 | 1.3.1.4 | Popular Banco de Dados no Servidor |  | 8h | 2008-11-04 08:00 | 2008-11-04 17:00 | 46SS |  |  | 15d | 5.38d |  | Humberto Marques | 8h |  | 240 |  |
| 48 | 1.3.1.5 | Reunião de Acompanhamento |  | 2h | 2008-11-12 11:00 | 2008-11-12 14:00 | 44, 45, 46, 47 |  |  | 9.62d | 0d |  |  |  |  |  |  |
| 49 | 1.3.2 | **Implementação dos Casos de Uso Web** |  | 4.25d | 2008-11-12 14:00 | 2008-11-18 16:00 | 48 |  |  | 9.62d | 0d |  |  | 96h |  | 2,880 |  |
| 50 | 1.3.2.1 | Consolidar BPA |  | 32h | 2008-11-12 14:00 | 2008-11-18 14:00 |  |  |  | 9.62d | 0d |  | Humberto Marques | 32h |  | 960 |  |
| 51 | 1.3.2.2 | Gerar Relatório |  | 32h | 2008-11-12 14:00 | 2008-11-18 14:00 | 50SS |  |  | 9.62d | 0d |  | Leszek Trajano | 32h |  | 960 |  |
| 52 | 1.3.2.3 | Sincronizar Dispositivel Móvel |  | 32h | 2008-11-12 14:00 | 2008-11-18 14:00 | 51SS |  |  | 9.62d | 0d |  | Antonio Carlos | 32h |  | 960 |  |
| 53 | 1.3.2.4 | Reunião de acompanhamento |  | 2h | 2008-11-18 14:00 | 2008-11-18 16:00 | 50, 51, 52 |  |  | 9.62d |  |  |  |  |  |  |  |
| 54 | 1.3.3 | Homologação da release |  | 2h | 2008-11-18 16:00 | 2008-11-19 09:00 | 43, 49 |  |  | 9.62d | 0d |  | George Melo | 2h |  | 60 |  |
| 55 | 1.3.4 | Criação da apresentação da release 3 |  | 2h | 2008-11-19 09:00 | 2008-11-19 11:00 | 54 |  |  | 9.62d | 0d |  | George Melo | 2h |  | 60 |  |
| 56 | 1.3.5 | Reunião de acompanhamento |  | 2h | 2008-11-19 11:00 | 2008-11-19 14:00 | 55 |  |  | 9.62d | 0d |  |  |  |  |  |  |
| 57 | 1.3.6 | Entrega da Realese 3 (Apresentação) |  | 2h | 2008-11-19 14:00 | 2008-11-19 16:00 | 56 |  |  | 9.62d | 1.12d |  |  |  |  |  |  |
| 58 | 1.3.7 | Final Realese 3 | milestone | 0d | 2008-11-21 08:00 | 2008-11-21 08:00 | 57 |  |  | 8.5d | 0d | start no earlier than 2008-11-21 08:00 |  |  |  |  |  |

| ID | WBS | Task | Type | Duration | Start | Finish | Predecessors | Total slack | Free slack | Constraint | Resources | Work | Cost |
| --- | --- | --- | --- | --- | --- | --- | --- | --- | --- | --- | --- | --- | --- |
| 59 | 1.4 | **Release 4** |  | 11d | 2008-11-21 08:00 | 2008-12-05 08:00 | 58 | 0d |  |  |  | 32h | 960 |
| 60 | 1.4.1 | Criação da apresentação final (Documentação) |  | 8h | 2008-11-21 08:00 | 2008-11-21 17:00 |  | 8.5d | 0d |  | George Melo | 8h | 240 |
| 61 | 1.4.2 | Criação da apresentação final (Diagramação) |  | 8h | 2008-11-21 08:00 | 2008-11-21 17:00 | 60SS | 8.5d | 0d |  | Antonio Carlos | 8h | 240 |
| 62 | 1.4.3 | Criação da apresentação final (Banco de Dados) |  | 8h | 2008-11-21 08:00 | 2008-11-21 17:00 | 61SS | 8.5d | 0d |  | Humberto Marques | 8h | 240 |
| 63 | 1.4.4 | Criação da apresentação final (Interfaces) |  | 8h | 2008-11-21 08:00 | 2008-11-21 17:00 | 62SS | 8.5d | 0d |  | Leszek Trajano | 8h | 240 |
| 64 | 1.4.5 | Reunião de acompanhamento |  | 2h | 2008-11-22 08:00 | 2008-11-22 10:00 | 63, 60, 61, 62 | 8.5d | 0d |  |  |  |  |
| 65 | 1.4.6 | Criação da apresentação final (Fusão) |  | 6h | 2008-11-22 10:00 | 2008-11-22 17:00 | 64, 60, 61, 62, 63 | 8.5d | 0d |  |  |  |  |
| 66 | 1.4.7 | Entrega da Realese 4 (Ensaio) |  | 4h | 2008-11-24 08:00 | 2008-11-24 12:00 | 65 | 8.5d |  |  |  |  |  |
| 67 | 1.4.8 | Final Realese 3 | milestone | 0d | 2008-12-05 08:00 | 2008-12-05 08:00 | 66 | 0d |  | start no earlier than 2008-12-05 08:00 |  |  |  |
